# پروژه قطعه سازی

Schedule from MS Project, 2024-09-25 to 2024-12-17, status date 2024-12-10, costs in IRR, A marks actual dates.

## Calendars

- Standard: Mon-Thu 08:00-12:00, 13:00-17:00; Fri off; Sat-Sun 08:00-12:00, 13:00-17:00.

## Resources

| Resource | Unit | Rate | Cost per use |
| --- | --- | --- | --- |
| کارگر |  | 20000 |  |
| مکانیک |  | 300000 |  |
| برق |  | 450000 |  |
| متلوژی |  | 50000 |  |
| مونتاژ کار |  | 600000 |  |
| حسابدار |  | 70000 |  |
| جرثقیل |  | 800000 | 2000000 |
| ربات مونتاژ |  | 450000 | 3000000 |
| اهن | تن | 20000 |  |
| مس | تن | 20000 |  |
| فولاد | تن | 60000 |  |
| سنگ | تن |  |  |
| هزینه ریخته گری |  |  |  |
| معاون اجرایی |  | 35000 |  |

## Schedule

| ID | WBS | Task | Type | Duration | Start | Finish | Predecessors | Complete | Baseline start | Baseline finish | Baseline duration | Deadline | Resources | Work | Actual work | Cost | Baseline cost | Actual cost |
| --- | --- | --- | --- | --- | --- | --- | --- | --- | --- | --- | --- | --- | --- | --- | --- | --- | --- | --- |
| 1 | 1 | **طراحی** |  | 32d | 2024-09-25 A | 2024-10-31 A |  | 100% | 2024-09-25 | 2024-10-28 | 29d |  |  | 656h | 656h | 182,680,000 | 173,080,000 | 182,680,000 |
| 2 | 1.1 | **تهیه مدل کلی** |  | 8d | 2024-09-25 A | 2024-10-03 A |  | 100% | 2024-09-25 | 2024-10-03 | 8d |  |  | 64h | 64h | 11,080,000 | 11,080,000 | 11,080,000 |
| 3 | 1.1.1 | شروع فاز ۱ | milestone | 0d | 2024-09-25 A | 2024-09-25 A |  | 100% | 2024-09-25 | 2024-09-25 | 0d |  |  |  |  |  |  |  |
| 4 | 1.1.2 | اخذ مشخصات کلی |  | 3d | 2024-09-25 A | 2024-09-28 A | 3 | 100% | 2024-09-25 | 2024-09-28 | 3d |  | متلوژی | 24h | 24h | 1,200,000 | 1,200,000 | 1,200,000 |
| 5 | 1.1.3 | تهیه طرح شماتیک دستی |  | 4d | 2024-09-29 A | 2024-10-02 A | 4 | 100% | 2024-09-29 | 2024-10-02 | 4d |  | مکانیک | 32h | 32h | 9,600,000 | 9,600,000 | 9,600,000 |
| 6 | 1.1.4 | اخذ تاییدیه اولیه |  | 1d | 2024-10-03 A | 2024-10-03 A | 5 | 100% | 2024-10-03 | 2024-10-03 | 1d |  | معاون اجرایی | 8h | 8h | 280,000 | 280,000 | 280,000 |
| 7 | 1.2 | **طراحی و شبیه سازی** |  | 24d | 2024-10-05 A | 2024-10-31 A | 2 | 100% | 2024-10-05 | 2024-10-28 | 21d |  |  | 592h | 592h | 171,600,000 | 162,000,000 | 171,600,000 |
| 8 | 1.2.1 | **طراحی بدنه** |  | 15d | 2024-10-05 A | 2024-10-21 A |  | 100% | 2024-10-05 | 2024-10-19 | 13d |  |  | 304h | 304h | 91,200,000 | 81,600,000 | 91,200,000 |
| 9 | 1.2.1.1 | طراحی کلی بدنه |  | 7d | 2024-10-05 A | 2024-10-12 A |  | 100% | 2024-10-05 | 2024-10-09 | 5d |  | مکانیک [200%] | 112h | 112h | 33,600,000 | 24,000,000 | 33,600,000 |
| 10 | 1.2.1.2 | اخذ تاییدیه |  | 2d | 2024-10-13 A | 2024-10-14 A | 9 | 100% | 2024-10-10 | 2024-10-12 | 2d | 2024-10-14 |  |  |  |  |  |  |
| 11 | 1.2.1.3 | طراحی جزئییات و رندرینگ |  | 6d | 2024-10-15 A | 2024-10-21 A | 10 | 100% | 2024-10-13 | 2024-10-19 | 6d |  | مکانیک [400%] | 192h | 192h | 57,600,000 | 57,600,000 | 57,600,000 |
| 12 | 1.2.2 | **طراحی اجزا** |  | 10d | 2024-10-15 A | 2024-10-26 A |  | 100% | 2024-10-13 | 2024-10-23 | 10d |  |  | 176h | 176h | 49,200,000 | 49,200,000 | 49,200,000 |
| 13 | 1.2.2.1 | طراحی اجزا فلزی |  | 3d | 2024-10-15 A | 2024-10-17 A | 10 | 100% | 2024-10-13 | 2024-10-15 | 3d |  | مکانیک | 24h | 24h | 7,200,000 | 7,200,000 | 7,200,000 |
| 14 | 1.2.2.2 | طراحی اجزا پلاستیکی |  | 6d | 2024-10-17 A | 2024-10-23 A | 13SS+2d | 100% | 2024-10-15 | 2024-10-21 | 6d |  | متلوژی; مکانیک | 96h | 96h | 16,800,000 | 16,800,000 | 16,800,000 |
| 15 | 1.2.2.3 | طراحی مدارات الکترونیکی |  | 7d | 2024-10-19 A | 2024-10-26 A | 13 | 100% | 2024-10-16 | 2024-10-23 | 7d |  | برق | 56h | 56h | 25,200,000 | 25,200,000 | 25,200,000 |
| 16 | 1.2.3 | **انجام تست های شبیه سازی** |  | 8d | 2024-10-23 A | 2024-10-31 A |  | 100% | 2024-10-20 | 2024-10-28 | 8d |  |  | 112h | 112h | 31,200,000 | 31,200,000 | 31,200,000 |
| 17 | 1.2.3.1 | شبیه سازی فشار و حرارت بدنه |  | 3d | 2024-10-23 A | 2024-10-26 A | 11 | 100% | 2024-10-20 | 2024-10-22 | 3d |  | متلوژی; مکانیک | 48h | 48h | 8,400,000 | 8,400,000 | 8,400,000 |
| 18 | 1.2.3.2 | شبیه سازی فشارو حرارت اجزا فلزی |  | 3d | 2024-10-27 A | 2024-10-29 A | 17, 13 | 100% | 2024-10-23 | 2024-10-26 | 3d |  | مکانیک; برق | 48h | 48h | 18,000,000 | 18,000,000 | 18,000,000 |
| 19 | 1.2.3.3 | شبیه سازی فشار و حرارت اجزا پلاستیکی |  | 2d | 2024-10-30 A | 2024-10-31 A | 17, 14, 18 | 100% | 2024-10-27 | 2024-10-28 | 2d |  | مکانیک | 16h | 16h | 4,800,000 | 4,800,000 | 4,800,000 |
| 20 | 1.2.3.4 | پایان فاز ۱ | milestone | 0d | 2024-10-31 A | 2024-10-31 A | 19 | 100% | 2024-10-28 | 2024-10-28 | 0d |  |  |  |  |  |  |  |
| 21 | 2 | **تهیه ملزومات** |  | 8d | 2024-11-02 A | 2024-11-10 A | 1 | 100% | 2024-10-29 | 2024-11-06 | 8d |  |  |  |  |  |  |  |
| 22 | 2.1 | **تهیه قطعات الکترونیکی** |  | 7d | 2024-11-02 A | 2024-11-09 A |  | 100% | 2024-10-29 | 2024-11-05 | 7d |  |  |  |  |  |  |  |
| 23 | 2.1.1 | تهیه لیست |  | 2d | 2024-11-02 A | 2024-11-03 A |  | 100% | 2024-10-29 | 2024-10-30 | 2d |  |  |  |  |  |  |  |
| 24 | 2.1.2 | استعلام |  | 1d | 2024-11-04 A | 2024-11-04 A | 23 | 100% | 2024-10-31 | 2024-10-31 | 1d |  |  |  |  |  |  |  |
| 25 | 2.1.3 | خرید |  | 1d | 2024-11-09 A | 2024-11-09 A | 24FS+3d | 100% | 2024-11-05 | 2024-11-05 | 1d |  |  |  |  |  |  |  |

| ID | WBS | Task | Duration | Start | Finish | Predecessors | Complete | Baseline start | Baseline finish | Baseline duration | Constraint | Resources | Work | Actual work | Cost | Baseline cost | Actual cost |
| --- | --- | --- | --- | --- | --- | --- | --- | --- | --- | --- | --- | --- | --- | --- | --- | --- | --- |
| 26 | 2.2 | **تهیه قطعات فلزی** | 8d | 2024-11-02 A | 2024-11-10 A |  | 100% | 2024-10-29 | 2024-11-06 | 8d |  |  |  |  |  |  |  |
| 27 | 2.2.1 | تهیه لیست | 2d | 2024-11-02 A | 2024-11-03 A |  | 100% | 2024-10-29 | 2024-10-30 | 2d |  |  |  |  |  |  |  |
| 28 | 2.2.2 | استعلام | 1d | 2024-11-04 A | 2024-11-04 A | 27 | 100% | 2024-10-31 | 2024-10-31 | 1d |  |  |  |  |  |  |  |
| 29 | 2.2.3 | خرید | 1d | 2024-11-09 A | 2024-11-09 A | 28FS+3d | 100% | 2024-11-05 | 2024-11-05 | 1d |  |  |  |  |  |  |  |
| 30 | 2.2.4 | انتقال | 1d | 2024-11-10 A | 2024-11-10 A | 29 | 100% | 2024-11-06 | 2024-11-06 | 1d |  |  |  |  |  |  |  |
| 31 | 3 | **ساخت** | 32d | 2024-11-10 A | 2024-12-17 A | 21 | 100% | 2024-11-06 | 2024-12-14 | 32d |  |  | 280h | 280h | 99,028,000 | 99,028,000 | 97,828,000 |
| 32 | 3.1 | **ساخت قطعات فلزی** | 21d | 2024-11-10 A | 2024-12-04 A |  | 100% | 2024-11-06 | 2024-12-01 | 21d |  |  | 208h | 208h | 63,028,000 | 63,028,000 | 61,828,000 |
| 33 | 3.1.1 | قالب سازی | 15d | 2024-11-11 A | 2024-11-27 A |  | 100% | 2024-11-07 | 2024-11-24 | 15d |  | مکانیک | 120h | 120h | 36,000,000 | 36,000,000 | 36,000,000 |
| 34 | 3.1.2 | سرد شدن | 2ed | 2024-11-10 A | 2024-11-12 A |  | 100% | 2024-11-06 | 2024-11-08 | 2ed |  |  |  |  |  |  |  |
| 35 | 3.1.3 | ریخته گری | 2d | 2024-11-28 A | 2024-11-30 A | 33 | 100% | 2024-11-25 | 2024-11-26 | 2d | start no earlier than 2024-11-25 | مس [0.2 تن]; اهن [2.5 تن]; هزینه ریخته گری [0.1%]; برق | 16h | 16h | 14,204,000 | 14,204,000 | 13,004,000 |
| 36 | 3.1.4 | تراشکاری | 2d | 2024-12-01 A | 2024-12-02 A | 35 | 100% | 2024-11-27 | 2024-11-28 | 2d |  | مکانیک; متلوژی; برق | 72h | 72h | 12,824,000 | 12,824,000 | 12,824,000 |
| 37 | 3.1.5 | سوراخ کاری و قلاویز | 2d | 2024-12-03 A | 2024-12-04 A | 36 | 100% | 2024-11-30 | 2024-12-01 | 2d |  |  |  |  |  |  |  |
| 38 | 3.2 | **ساخت قطعات پلاستیکی** | 32d | 2024-11-11 A | 2024-12-17 A |  | 100% | 2024-11-07 | 2024-12-14 | 32d |  |  | 72h | 72h | 36,000,000 | 36,000,000 | 36,000,000 |
| 39 | 3.2.1 | قالب سازی | 10d | 2024-11-11 A | 2024-11-21 A |  | 100% | 2024-11-07 | 2024-11-18 | 10d |  |  |  |  |  |  |  |
| 40 | 3.2.2 | تزریق پلاستیک | 3d | 2024-11-23 A | 2024-11-25 A | 39 | 100% | 2024-11-19 | 2024-11-21 | 3d |  |  |  |  |  |  |  |
| 41 | 3.2.3 | تراشکاری و سوراخ کاری | 2d | 2024-11-26 A | 2024-11-27 A | 40 | 100% | 2024-11-23 | 2024-11-24 | 2d |  |  |  |  |  |  |  |
| 42 | 3.2.4 | **مونتاژ نهایی** | 11d | 2024-12-05 A | 2024-12-17 A | 32 | 100% | 2024-12-02 | 2024-12-14 | 11d |  |  | 72h | 72h | 36,000,000 | 36,000,000 | 36,000,000 |
| 43 | 3.2.4.1 | سوار کردن قطعات فلزی روی بدنه | 4d | 2024-12-05 A | 2024-12-09 A |  | 100% | 2024-12-02 | 2024-12-05 | 4d |  | ربات مونتاژ | 32h | 32h | 17,400,000 | 17,400,000 | 17,400,000 |
| 44 | 3.2.4.2 | سوار کردن قطعات پلاستیکی روی بدنه | 2d | 2024-12-10 A | 2024-12-11 A | 43 | 100% | 2024-12-07 | 2024-12-08 | 2d |  | مکانیک | 16h | 16h | 4,800,000 | 4,800,000 | 4,800,000 |
| 45 | 3.2.4.3 | نصب قطعات الکترونیکی | 3d | 2024-12-12 A | 2024-12-15 A | 44 | 100% | 2024-12-09 | 2024-12-11 | 3d |  | ربات مونتاژ | 24h | 24h | 13,800,000 | 13,800,000 | 13,800,000 |
| 46 | 3.2.4.4 | تست مکانیکی | 1d | 2024-12-16 A | 2024-12-16 A | 45 | 100% | 2024-12-12 | 2024-12-12 | 1d |  |  |  |  |  |  |  |
| 47 | 3.2.4.5 | تست اولیه | 1d | 2024-12-17 A | 2024-12-17 A | 46 | 100% | 2024-12-14 | 2024-12-14 | 1d |  |  |  |  |  |  |  |
